# SoCRocket

Schedule from GanttProject, 2012-03-05 to 2012-06-29.
TU-Braunschweig

## Calendars

- Project calendar: Mon-Fri working; Sat-Sun off.

## Resources

| Resource |
| --- |
| Norman Dankert |
| Thomas Schuster |
| Rolf Meyer |

## Schedule

| ID | Task | Type | Duration | Start | Finish | Predecessors | Complete | Resources |
| --- | --- | --- | --- | --- | --- | --- | --- | --- |
| 1 | Update Development Plan / Decide AXI |  | 1d | 2012-03-05 | 2012-03-05 |  |  | Thomas Schuster |
| 2 | Analysis Capability Report |  | 1d | 2012-03-06 | 2012-03-06 |  | 50% | Thomas Schuster |
| 3 | Memory Controller SI bit verify/describe |  | 1d | 2012-03-07 | 2012-03-07 |  |  | Rolf Meyer [25%] |
| 4 | Processor Status Register |  | 1d | 2012-03-07 | 2012-03-07 |  | 50% | Thomas Schuster [25%]; Rolf Meyer [50%] |
| 5 | Burst Fetch with Icache disabled |  | 1d | 2012-03-07 | 2012-03-07 |  |  | Thomas Schuster [25%] |
| 6 | Cache lock vs. cache freeze |  | 1d | 2012-03-07 | 2012-03-07 |  |  | Thomas Schuster [25%] |
| 7 | AHBCTRL data split |  | 1d | 2012-03-07 | 2012-03-07 |  |  | Thomas Schuster [25%] |
| 8 | MCTRL power events |  | 1d | 2012-03-07 | 2012-03-07 |  | 50% | Rolf Meyer [25%] |
| 9 | PM Concept Documentation UM |  | 1d | 2012-03-08 | 2012-03-08 |  |  | Thomas Schuster [90%] |
| 10 | SpaceWire Integration |  | 1d | 2012-03-08 | 2012-03-08 |  | 80% | Rolf Meyer |
| 11 | Scratchpad region with LR disabled |  | 1d | 2012-03-08 | 2012-03-08 |  |  | Thomas Schuster [10%] |
| 12 | MCTRL RMW timing fix |  | 1d | 2012-03-09 | 2012-03-09 |  |  | Rolf Meyer [50%] |
| 13 | Fix mmu_cache co-simulation |  | 3d | 2012-03-09 | 2012-03-13 |  | 20% | Thomas Schuster |
| 14 | Update Verific Doc |  | 1d | 2012-03-14 | 2012-03-14 | 12, 13 |  | Thomas Schuster; Rolf Meyer [10%] |
| 15 | Draft DF Document |  | 3d | 2012-03-15 | 2012-03-19 |  |  | Thomas Schuster |
| 16 | Debug/Map Software Tests |  | 7d | 2012-03-12 | 2012-03-20 |  | 20% | Rolf Meyer [80%] |
| 17 | UM or DF - transactor documentation |  | 1d | 2012-03-20 | 2012-03-20 |  |  | Thomas Schuster |
| 18 | Verific. Doc - Update SW test section |  | 1d | 2012-03-21 | 2012-03-21 | 16 |  | Thomas Schuster [20%] |
| 19 | Update User Manual: Guidlines for creation of new models + list of required packages |  | 1d | 2012-03-21 | 2012-03-21 |  |  | Thomas Schuster [80%] |
| 20 | Prepare Follow Up Telco + Send Documents |  | 1d | 2012-03-22 | 2012-03-22 |  |  | Thomas Schuster |
| 21 | MMU_CACHE - raise coverage |  | 1d | 2012-03-23 | 2012-03-23 |  | 50% | Thomas Schuster [90%] |
| 22 | MMU - Error case behaviour |  | 2d | 2012-03-26 | 2012-03-27 |  |  | Thomas Schuster |
| 23 | Library clean up (waf, compat, coding style) |  | 8d | 2012-03-09 | 2012-03-20 |  | 70% | Rolf Meyer [20%] |
| 24 | Follow-Up Telco (MDR/DFR) | milestone | 0d | 2012-03-27 | 2012-03-27 |  |  |  |
| 25 | Multi-proc template for DSE |  | 5d | 2012-03-21 | 2012-03-27 |  | 40% | Rolf Meyer |
| 26 | Clean UP for MDR/DFR closure |  | 3d | 2012-03-28 | 2012-03-30 |  |  | Thomas Schuster; Rolf Meyer |
| 27 | Prepare Application for DSE |  | 3d | 2012-04-11 | 2012-04-13 |  |  | Thomas Schuster |
| 28 | Prepare SoCRocket Publication(s) |  | 8d | 2012-04-16 | 2012-04-25 |  |  | Thomas Schuster |
| 29 | RTEMS mapping |  | 10d | 2012-04-09 | 2012-04-20 |  | 20% | Rolf Meyer |
| 30 | Upgrade build system for RTEMS and DSE |  | 3d | 2012-04-23 | 2012-04-25 | 29 |  | Rolf Meyer |
| 31 | Multi-Proc HL DSE |  | 7d | 2012-04-26 | 2012-05-04 | 27, 29, 30 |  | Thomas Schuster [80%]; Rolf Meyer |
| 32 | High-Level DSE Report |  | 7d | 2012-04-26 | 2012-05-04 |  |  | Thomas Schuster [20%] |
| 33 | SoCWire AT mode |  | 40d | 2012-03-05 | 2012-04-27 |  |  | Norman Dankert |
| 34 | Update VPI and library from lessons learned |  | 5d | 2012-05-07 | 2012-05-11 | 31 |  | Thomas Schuster; Rolf Meyer |
| 35 | Update DF Document (final) |  | 3d | 2012-05-14 | 2012-05-16 | 34 |  | Thomas Schuster |
| 36 | Update UM, Analysis Report |  | 2d | 2012-05-17 | 2012-05-18 | 34FS+3d |  | Thomas Schuster |
| 37 | Implement AXI model |  | 25d | 2012-05-14 | 2012-06-15 |  |  | Rolf Meyer |
| 38 | PM Validation/Verification |  | 20d | 2012-05-21 | 2012-06-15 |  |  | Thomas Schuster |
| 39 | Update UM & Verif. Doc |  | 2d | 2012-06-18 | 2012-06-19 |  |  | Thomas Schuster |
| 40 | Final Report |  | 3d | 2012-06-20 | 2012-06-22 |  |  | Thomas Schuster |
| 41 | Executive Summary |  | 3d | 2012-06-20 | 2012-06-22 |  |  |  |
| 42 | Acceptance Review (AR) | milestone | 0d | 2012-06-29 | 2012-06-29 |  |  |  |
